# TIẾN ĐỘ THI CÔNG CẦU THÔN KHAI HOANG 2, KM14+363.65

Schedule from MS Project XML, 2026-10-01 to 2027-05-01.
BAN QLDA DTXD HUYEN DONG VAN

## Schedule

| ID | Task | Duration | Start | Finish | Predecessors |
| --- | --- | --- | --- | --- | --- |
| 1 | Bàn giao cọc mốc tim tuyến và định vị công trình | 5d | 2026-10-01 | 2026-10-05 |  |
| 2 | Thi công đường công vụ, lán trại và dọn dẹp mặt bằng | 15d | 2026-10-06 | 2026-10-20 | 1 |
| 3 | Kiểm định vật liệu đầu vào (Xi măng, cát, đá, thép) | 10d | 2026-10-06 | 2026-10-15 | 2 |
| 4 | Thi công bãi đúc dầm T15m và lắp đặt trạm trộn | 20d | 2026-10-21 | 2026-11-09 | 3 |
| 5 | Đào hố móng mố M1 và xử lý nền đá nứt nẻ | 20d | 2026-10-21 | 2026-11-09 | 4 |
| 6 | Khoan cấy cốt thép neo D32 vào nền đá hố móng M1 | 10d | 2026-11-10 | 2026-11-19 | 5 |
| 7 | Đổ bê tông đệm móng mố M1 C10 (M150) | 3d | 2026-11-20 | 2026-11-22 | 6 |
| 8 | Gia công lắp dựng cốt thép và ván khuôn móng mố M1 | 10d | 2026-11-23 | 2026-12-02 | 7 |
| 9 | Đổ bê tông móng mố M1 C30 (V = 110 m3) | 4d | 2026-12-03 | 2026-12-06 | 8 |
| 10 | Đào hố móng và khoan cấy thép neo nền đá mố M2 | 20d | 2026-11-10 | 2026-11-29 | 9 |
| 11 | Đổ bê tông đệm và bê tông móng mố M2 C30 | 12d | 2026-11-30 | 2026-12-11 | 10 |
| 12 | Thi công thân mố, tường ngực và tường cánh M1 C30 | 25d | 2026-12-07 | 2026-12-31 | 11 |
| 13 | Thi công thân mố, tường ngực và tường cánh M2 C30 | 25d | 2026-12-12 | 2027-01-05 | 12 |
| 14 | Đúc 4 phiến dầm chủ T15m C40 tại bãi đúc dầm | 40d | 2026-12-15 | 2027-01-23 | 13 |
| 15 | Bảo dưỡng dầm T15m và nghiệm thu xuất xưởng | 14d | 2027-01-24 | 2027-02-06 | 14 |
| 16 | Lắp đặt đá kê gối và 8 gối cao su bản thép (350x500x84) | 6d | 2027-02-07 | 2027-02-12 | 15 |
| 17 | Lao lắp 4 phiến dầm T15m vào vị trí mố M1-M2 | 8d | 2027-02-13 | 2027-02-20 | 16 |
| 18 | Thi công 3 dầm ngang C30 liên kết dầm chủ | 12d | 2027-02-21 | 2027-03-04 | 17 |
| 19 | Lắp đặt ván khuôn, lưới thép D6 và đổ bê tông mặt cầu C35 | 18d | 2027-03-05 | 2027-03-22 | 18 |
| 20 | Thi công gờ lan can C25 và lắp đặt lan can thép mạ kẽm | 15d | 2027-03-23 | 2027-04-06 | 19 |
| 21 | Thi công bản quá độ hai đầu cầu và tường chắn đất C25 | 20d | 2027-03-23 | 2027-04-11 | 20 |
| 22 | Lắp khe co giãn, thảm BTNC 19, thử tải và bàn giao | 20d | 2027-04-12 | 2027-05-01 | 21 |
